# HYPERSCALE_CAMPUS

Schedule from Primavera P6, 2025-09-01 to 2026-10-26, data date 2025-11-03, A marks actual dates.

## Schedule

| ID | Activity | Type | Duration | Start | Finish | Predecessors | Complete | Remaining | Planned start | Planned finish | Total float | Constraint |
| --- | --- | --- | --- | --- | --- | --- | --- | --- | --- | --- | --- | --- |
| M000 | Notice to proceed | milestone | 0d | 2025-09-01 A | 2025-09-01 A |  | 100% |  |  |  |  |  |
| A800 | Building A energized | milestone | 0d | 2026-07-06 | 2026-07-06 | A440, E410 |  |  | 2026-06-02 | 2026-06-01 | -15d | finish on or before 2026-06-15 |
| A900 | Building A ready for service | milestone | 0d | 2026-10-12 | 2026-10-12 | A730 |  |  | 2026-09-22 | 2026-09-21 | -5d | finish on or before 2026-10-05 |
| B800 | Building B energized | milestone | 0d | 2026-07-06 | 2026-07-06 | B440, E410 |  |  | 2026-07-01 | 2026-06-30 | 6d | finish on or before 2026-07-14 |
| B900 | Building B ready for service | milestone | 0d | 2026-10-26 | 2026-10-26 | B730 |  |  | 2026-10-27 | 2026-10-26 | 0d | finish on or before 2026-11-09 |
| S100 | Site clearing |  | 14d | 2025-09-01 A | 2025-09-18 A | M000 | 100% |  |  |  |  |  |
| S110 | Mass grading |  | 21d | 2025-09-19 A | 2025-10-17 A | S100 | 100% |  |  |  |  |  |
| S120 | Underground utilities |  | 28d | 2025-10-20 A | 2025-11-26 | S110 | 36% | 18d |  |  | -10d |  |
| P300 | Switchgear fabrication and delivery |  | 138d | 2025-09-01 A | 2026-03-23 | M000 | 27% | 101d | 2025-09-01 | 2026-03-04 | 11d |  |
| P310 | Transformer fabrication and delivery |  | 154d | 2025-09-01 A | 2026-05-07 | M000 | 13% | 134d | 2025-09-01 | 2026-04-02 | -15d |  |
| P320 | Generator fabrication and delivery |  | 160d | 2025-09-01 A | 2026-05-29 | M000 | 6% | 150d | 2025-09-01 | 2026-03-13 | 14d |  |
| P330 | Chiller fabrication and delivery |  | 112d | 2025-09-01 A | 2026-02-24 | M000 | 27% | 82d | 2025-09-01 | 2026-02-03 | 26d |  |
| P340 | UPS fabrication and delivery |  | 106d | 2025-09-01 A | 2026-02-02 | M000 | 38% | 66d | 2025-09-01 | 2026-01-14 | 91d |  |
| E400 | Substation civil and structure |  | 56d | 2025-11-27 | 2026-02-12 | S120 |  |  |  |  | 45d |  |
| E410 | Utility interconnect |  | 42d | 2026-02-13 | 2026-04-13 | E400 |  |  |  |  | 45d |  |
| E420 | Set and test main transformers |  | 14d | 2026-05-08 | 2026-05-27 | E400, P310 |  |  | 2026-04-03 | 2026-04-22 | -15d |  |
| E450 | Set and test generators |  | 21d | 2026-06-01 | 2026-06-29 | P320, E400 |  |  | 2026-03-16 | 2026-04-13 | 14d |  |
| A200 | Building A foundations |  | 35d | 2025-11-03 | 2025-12-19 | S120 SS+10d |  |  |  |  | 10d |  |
| A210 | Building A steel erection |  | 42d | 2025-12-22 | 2026-02-17 | A200 |  |  |  |  | 10d |  |
| A220 | Building A roofing |  | 21d | 2026-02-18 | 2026-03-18 | A210 |  |  |  |  | 10d |  |
| A230 | Building A envelope and façade |  | 35d | 2026-01-05 | 2026-02-20 | A210 SS+10d |  |  |  |  | 28d |  |
| A430 | Building A install switchgear |  | 21d | 2026-03-24 | 2026-04-21 | A220, P300 |  |  | 2026-03-19 | 2026-04-16 | 11d |  |
| A440 | Building A medium-voltage feeders |  | 28d | 2026-05-28 | 2026-07-06 | A430, E420 |  |  | 2026-04-23 | 2026-06-01 | -15d |  |
| A500 | Building A install chillers |  | 28d | 2026-03-19 | 2026-04-27 | P330, A220 |  |  |  |  | 10d |  |
| A510 | Building A CRAH units |  | 21d | 2026-02-23 | 2026-03-23 | A230 |  |  |  |  | 70d |  |
| A520 | Building A chilled water piping |  | 35d | 2026-04-28 | 2026-06-15 | A500 |  |  |  |  | 10d |  |
| A600 | Building A raised floor and containment |  | 28d | 2026-02-23 | 2026-04-01 | A230 |  |  |  |  | 28d |  |
| A610 | Building A cable tray |  | 21d | 2026-04-02 | 2026-04-30 | A600 |  |  |  |  | 28d |  |
| A620 | Building A UPS installation |  | 14d | 2026-05-01 | 2026-05-20 | A610, P340 |  |  |  |  | 28d |  |
| A700 | Building A L2 installation checks |  | 14d | 2026-07-07 | 2026-07-24 | A800, A520, A510, A620 |  |  | 2026-06-16 | 2026-07-03 | -5d |  |
| A710 | Building A L3 startup |  | 21d | 2026-07-27 | 2026-08-24 | E450, A700 |  |  | 2026-07-06 | 2026-08-03 | -5d |  |
| A720 | Building A L4 functional testing |  | 21d | 2026-08-25 | 2026-09-22 | A710 |  |  | 2026-08-04 | 2026-09-01 | -5d |  |
| A730 | Building A L5 integrated systems test |  | 14d | 2026-09-23 | 2026-10-12 | A720 |  |  | 2026-09-02 | 2026-09-21 | -5d |  |
| B200 | Building B foundations |  | 35d | 2025-12-08 | 2026-01-23 | S120 SS+35d |  |  |  |  | 0d |  |
| B210 | Building B steel erection |  | 42d | 2026-01-26 | 2026-03-24 | B200 |  |  |  |  | 0d |  |
| B220 | Building B roofing |  | 21d | 2026-03-25 | 2026-04-22 | B210 |  |  |  |  | 0d |  |
| B230 | Building B envelope and façade |  | 35d | 2026-02-09 | 2026-03-27 | B210 SS+10d |  |  |  |  | 18d |  |
| B430 | Building B install switchgear |  | 21d | 2026-04-23 | 2026-05-21 | B220, P300 |  |  |  |  | 10d |  |
| B440 | Building B medium-voltage feeders |  | 28d | 2026-05-28 | 2026-07-06 | B430, E420 |  |  | 2026-05-22 | 2026-06-30 | 6d |  |
| B500 | Building B install chillers |  | 28d | 2026-04-23 | 2026-06-01 | P330, B220 |  |  |  |  | 0d |  |
| B510 | Building B CRAH units |  | 21d | 2026-03-30 | 2026-04-27 | B230 |  |  |  |  | 60d |  |
| B520 | Building B chilled water piping |  | 35d | 2026-06-02 | 2026-07-20 | B500 |  |  |  |  | 0d |  |
| B600 | Building B raised floor and containment |  | 28d | 2026-03-30 | 2026-05-06 | B230 |  |  |  |  | 18d |  |
| B610 | Building B cable tray |  | 21d | 2026-05-07 | 2026-06-04 | B600 |  |  |  |  | 18d |  |
| B620 | Building B UPS installation |  | 14d | 2026-06-05 | 2026-06-24 | B610, P340 |  |  |  |  | 18d |  |
| B700 | Building B L2 installation checks |  | 14d | 2026-07-21 | 2026-08-07 | B800, B520, B510, B620 |  |  |  |  | 0d |  |
| B710 | Building B L3 startup |  | 21d | 2026-08-10 | 2026-09-07 | E450, B700 |  |  |  |  | 0d |  |
| B720 | Building B L4 functional testing |  | 21d | 2026-09-08 | 2026-10-06 | B710 |  |  |  |  | 0d |  |
| B730 | Building B L5 integrated systems test |  | 14d | 2026-10-07 | 2026-10-26 | B720 |  |  |  |  | 0d |  |

Notes:
- P310: Transformer shipment held at port awaiting customs release
