# HYPERSCALE_CAMPUS

Schedule from Primavera P6, 2025-09-01 to 2027-03-18, data date 2026-03-23, A marks actual dates.

## Schedule

| ID | Activity | Type | Duration | Start | Finish | Predecessors | Complete | Remaining | Planned start | Planned finish | Total float | Constraint |
| --- | --- | --- | --- | --- | --- | --- | --- | --- | --- | --- | --- | --- |
| M000 | Notice to proceed | milestone | 0d | 2025-09-01 A | 2025-09-01 A |  | 100% |  |  |  |  |  |
| A800 | Building A energized | milestone | 0d | 2026-12-10 | 2026-12-10 | A440, E410 |  |  | 2026-06-02 | 2026-06-01 | -128d | finish on or before 2026-06-15 |
| A900 | Building A ready for service | milestone | 0d | 2027-03-18 | 2027-03-18 | A730 |  |  | 2026-09-22 | 2026-09-21 | -118d | finish on or before 2026-10-05 |
| B800 | Building B energized | milestone | 0d | 2026-12-10 | 2026-12-10 | B440, E410 |  |  | 2026-07-01 | 2026-06-30 | -107d | finish on or before 2026-07-14 |
| B900 | Building B ready for service | milestone | 0d | 2027-03-18 | 2027-03-18 | B730 |  |  | 2026-10-27 | 2026-10-26 | -93d | finish on or before 2026-11-09 |
| S100 | Site clearing |  | 14d | 2025-09-01 A | 2025-09-18 A | M000 | 100% |  |  |  |  |  |
| S110 | Mass grading |  | 21d | 2025-09-19 A | 2025-10-17 A | S100 | 100% |  |  |  |  |  |
| S120 | Underground utilities |  | 28d | 2025-10-20 A | 2025-11-26 A | S110 | 100% |  |  |  |  |  |
| P300 | Switchgear fabrication and delivery |  | 146d | 2025-09-01 A | 2026-07-28 | M000 | 37% | 92d | 2025-09-01 | 2026-03-04 | -80d |  |
| P310 | Transformer fabrication and delivery |  | 222d | 2025-09-01 A | 2026-10-13 | M000 | 34% | 147d | 2025-09-01 | 2026-04-02 | -128d |  |
| P320 | Generator fabrication and delivery |  | 170d | 2025-09-01 A | 2026-07-24 | M000 | 47% | 90d | 2025-09-01 | 2026-03-13 | -26d |  |
| P330 | Chiller fabrication and delivery |  | 112d | 2025-09-01 A | 2026-02-24 A | M000 | 100% |  | 2025-09-01 | 2026-02-03 |  |  |
| P340 | UPS fabrication and delivery |  | 111d | 2025-09-01 A | 2026-03-09 A | M000 | 100% |  | 2025-09-01 | 2026-01-14 |  |  |
| E400 | Substation civil and structure |  | 56d | 2025-11-27 A | 2026-02-12 A | S120 | 100% |  |  |  |  |  |
| E410 | Utility interconnect |  | 50d | 2026-02-13 A | 2026-04-23 | E400 | 52% | 24d | 2026-02-13 | 2026-04-13 | 37d |  |
| E420 | Set and test main transformers |  | 14d | 2026-10-14 | 2026-11-02 | E400, P310 |  |  | 2026-04-03 | 2026-04-22 | -128d |  |
| E450 | Set and test generators |  | 21d | 2026-07-27 | 2026-08-24 | P320, E400 |  |  | 2026-03-16 | 2026-04-13 | -26d |  |
| A200 | Building A foundations |  | 35d | 2025-11-03 A | 2025-12-24 A | S120 SS+10d | 100% |  | 2025-11-03 | 2025-12-19 |  |  |
| A210 | Building A steel erection |  | 42d | 2025-12-25 A | 2026-03-04 A | A200 | 100% |  | 2025-12-22 | 2026-02-17 |  |  |
| A220 | Building A roofing |  | 21d | 2026-03-05 A | 2026-04-02 | A210 | 57% | 9d | 2026-02-18 | 2026-03-18 | -1d |  |
| A230 | Building A envelope and façade |  | 35d | 2026-01-08 A | 2026-02-25 A | A210 SS+10d | 100% |  | 2026-01-05 | 2026-02-20 |  |  |
| A430 | Building A install switchgear |  | 21d | 2026-07-29 | 2026-08-26 | A220, P300 |  |  | 2026-03-19 | 2026-04-16 | -80d |  |
| A440 | Building A medium-voltage feeders |  | 28d | 2026-11-03 | 2026-12-10 | A430, E420 |  |  | 2026-04-23 | 2026-06-01 | -128d |  |
| A500 | Building A install chillers |  | 28d | 2026-04-03 | 2026-05-12 | P330, A220 |  |  | 2026-03-19 | 2026-04-27 | -1d |  |
| A510 | Building A CRAH units |  | 21d | 2026-02-26 A | 2026-04-07 | A230 | 43% | 12d | 2026-02-23 | 2026-03-23 | 59d |  |
| A520 | Building A chilled water piping |  | 35d | 2026-05-13 | 2026-06-30 | A500 |  |  | 2026-04-28 | 2026-06-15 | -1d |  |
| A600 | Building A raised floor and containment |  | 28d | 2026-02-26 A | 2026-04-13 | A230 | 43% | 16d | 2026-02-23 | 2026-04-01 | 20d |  |
| A610 | Building A cable tray |  | 21d | 2026-04-14 | 2026-05-12 | A600 |  |  | 2026-04-02 | 2026-04-30 | 20d |  |
| A620 | Building A UPS installation |  | 14d | 2026-05-13 | 2026-06-01 | A610, P340 |  |  | 2026-05-01 | 2026-05-20 | 20d |  |
| A700 | Building A L2 installation checks |  | 14d | 2026-12-11 | 2026-12-30 | A800, A520, A510, A620 |  |  | 2026-06-16 | 2026-07-03 | -118d |  |
| A710 | Building A L3 startup |  | 21d | 2026-12-31 | 2027-01-28 | E450, A700 |  |  | 2026-07-06 | 2026-08-03 | -118d |  |
| A720 | Building A L4 functional testing |  | 21d | 2027-01-29 | 2027-02-26 | A710 |  |  | 2026-08-04 | 2026-09-01 | -118d |  |
| A730 | Building A L5 integrated systems test |  | 14d | 2027-03-01 | 2027-03-18 | A720 |  |  | 2026-09-02 | 2026-09-21 | -118d |  |
| B200 | Building B foundations |  | 35d | 2025-12-08 A | 2026-01-23 A | S120 SS+35d | 100% |  |  |  |  |  |
| B210 | Building B steel erection |  | 42d | 2026-01-26 A | 2026-03-27 | B200 | 88% | 5d | 2026-01-26 | 2026-03-24 | 7d |  |
| B220 | Building B roofing |  | 21d | 2026-03-30 | 2026-04-27 | B210 |  |  | 2026-03-25 | 2026-04-22 | 7d |  |
| B230 | Building B envelope and façade |  | 35d | 2026-02-09 A | 2026-04-01 | B210 SS+10d | 77% | 8d | 2026-02-09 | 2026-03-27 | 25d |  |
| B430 | Building B install switchgear |  | 21d | 2026-07-29 | 2026-08-26 | B220, P300 |  |  | 2026-04-23 | 2026-05-21 | -59d |  |
| B440 | Building B medium-voltage feeders |  | 28d | 2026-11-03 | 2026-12-10 | B430, E420 |  |  | 2026-05-22 | 2026-06-30 | -107d |  |
| B500 | Building B install chillers |  | 28d | 2026-04-28 | 2026-06-04 | P330, B220 |  |  | 2026-04-23 | 2026-06-01 | 7d |  |
| B510 | Building B CRAH units |  | 21d | 2026-04-02 | 2026-04-30 | B230 |  |  | 2026-03-30 | 2026-04-27 | 67d |  |
| B520 | Building B chilled water piping |  | 35d | 2026-06-05 | 2026-07-23 | B500 |  |  | 2026-06-02 | 2026-07-20 | 7d |  |
| B600 | Building B raised floor and containment |  | 28d | 2026-04-02 | 2026-05-11 | B230 |  |  | 2026-03-30 | 2026-05-06 | 25d |  |
| B610 | Building B cable tray |  | 21d | 2026-05-12 | 2026-06-09 | B600 |  |  | 2026-05-07 | 2026-06-04 | 25d |  |
| B620 | Building B UPS installation |  | 14d | 2026-06-10 | 2026-06-29 | B610, P340 |  |  | 2026-06-05 | 2026-06-24 | 25d |  |
| B700 | Building B L2 installation checks |  | 14d | 2026-12-11 | 2026-12-30 | B800, B520, B510, B620 |  |  | 2026-07-21 | 2026-08-07 | -93d |  |
| B710 | Building B L3 startup |  | 21d | 2026-12-31 | 2027-01-28 | E450, B700 |  |  | 2026-08-10 | 2026-09-07 | -93d |  |
| B720 | Building B L4 functional testing |  | 21d | 2027-01-29 | 2027-02-26 | B710 |  |  | 2026-09-08 | 2026-10-06 | -93d |  |
| B730 | Building B L5 integrated systems test |  | 14d | 2027-03-01 | 2027-03-18 | B720 |  |  | 2026-10-07 | 2026-10-26 | -93d |  |

Notes:
- P300: Switchgear shipment waiting on breaker components
- A510: Façade panels arrived damaged; replacements ordered
- A600: RFI on containment layout still open with design team
- B230: Rain days lost on excavation
