# HYPERSCALE_CAMPUS

Schedule from Primavera P6, 2025-09-01 to 2027-04-14, data date 2026-06-15, A marks actual dates.

## Schedule

| ID | Activity | Type | Duration | Start | Finish | Complete | Remaining | Planned start | Planned finish | Total float |
| --- | --- | --- | --- | --- | --- | --- | --- | --- | --- | --- |
| M000 | Notice to proceed | milestone | 0d | 2025-09-01 A | 2025-09-01 A | 100% |  |  |  |  |
| S100 | Site clearing |  | 14d | 2025-09-01 A | 2025-09-18 A | 100% |  |  |  |  |
| S110 | Mass grading |  | 21d | 2025-09-19 A | 2025-10-17 A | 100% |  |  |  |  |
| S120 | Underground utilities |  | 28d | 2025-10-20 A | 2025-11-26 A | 100% |  |  |  |  |
| P300 | Switchgear fabrication and delivery |  | 156d | 2025-09-01 A | 2026-09-08 | 60% | 62d | 2025-09-01 | 2026-03-04 | -110d |
| P310 | Transformer fabrication and delivery |  | 235d | 2025-09-01 A | 2026-12-25 | 40% | 140d | 2025-09-01 | 2026-04-02 | -181d |
| P320 | Generator fabrication and delivery |  | 170d | 2025-09-01 A | 2026-09-18 | 59% | 70d | 2025-09-01 | 2026-03-13 | -66d |
| P330 | Chiller fabrication and delivery |  | 112d | 2025-09-01 A | 2026-02-24 A | 100% |  | 2025-09-01 | 2026-02-03 |  |
| P340 | UPS fabrication and delivery |  | 111d | 2025-09-01 A | 2026-03-09 A | 100% |  | 2025-09-01 | 2026-01-14 |  |
| E400 | Substation civil and structure |  | 56d | 2025-11-27 A | 2026-02-12 A | 100% |  |  |  |  |
| E410 | Utility interconnect |  | 50d | 2026-02-13 A | 2026-04-23 A | 100% |  | 2026-02-13 | 2026-04-13 |  |
| E420 | Set and test main transformers |  | 14d | 2026-12-28 | 2027-01-14 |  |  | 2026-04-03 | 2026-04-22 | -181d |
| E450 | Set and test generators |  | 21d | 2026-09-21 | 2026-10-19 |  |  | 2026-03-16 | 2026-04-13 | -66d |
| A200 | Building A foundations |  | 35d | 2025-11-03 A | 2025-12-24 A | 100% |  | 2025-11-03 | 2025-12-19 |  |
| A210 | Building A steel erection |  | 42d | 2025-12-25 A | 2026-03-04 A | 100% |  | 2025-12-22 | 2026-02-17 |  |
| A220 | Building A roofing |  | 21d | 2026-03-05 A | 2026-04-02 A | 100% |  | 2026-02-18 | 2026-03-18 |  |
| A230 | Building A envelope and façade |  | 35d | 2026-01-08 A | 2026-02-25 A | 100% |  | 2026-01-05 | 2026-02-20 |  |
| A430 | Building A install switchgear |  | 21d | 2026-09-09 | 2026-10-07 |  |  | 2026-03-19 | 2026-04-16 | -110d |
| A440 | Building A medium-voltage feeders |  | 28d | 2027-01-15 | 2027-02-23 |  |  | 2026-04-23 | 2026-06-01 | -181d |
| A500 | Building A install chillers |  | 28d | 2026-04-03 A | 2026-05-27 A | 100% |  | 2026-03-19 | 2026-04-27 |  |
| A510 | Building A CRAH units |  | 21d | 2026-02-26 A | 2026-04-07 A | 100% |  | 2026-02-23 | 2026-03-23 |  |
| A520 | Building A chilled water piping |  | 35d | 2026-05-28 A | 2026-07-27 | 11% | 31d | 2026-04-28 | 2026-06-15 | -20d |
| A600 | Building A raised floor and containment |  | 28d | 2026-02-26 A | 2026-04-13 A | 100% |  | 2026-02-23 | 2026-04-01 |  |
| A610 | Building A cable tray |  | 21d | 2026-04-14 A | 2026-05-12 A | 100% |  | 2026-04-02 | 2026-04-30 |  |
| A620 | Building A UPS installation |  | 17d | 2026-05-13 A | 2026-06-04 A | 100% |  | 2026-05-01 | 2026-05-20 |  |
| A700 | Building A L2 installation checks |  | 14d | 2027-02-24 | 2027-03-15 |  |  | 2026-06-16 | 2026-07-03 | -171d |
| A710 | Building A L3 startup |  | 21d | 2027-03-16 | 2027-04-13 |  |  | 2026-07-06 | 2026-08-03 | -171d |
| A720 | Building A L4 functional testing |  | 21d | 2027-04-14 | 2026-09-01 |  |  | 2026-08-04 | 2026-09-01 | -171d |
