# HYPERSCALE_CAMPUS

Schedule from Primavera P6, 2025-09-01 to 2027-07-13, data date 2026-07-20, A marks actual dates.

## Schedule

| ID | Activity | Type | Duration | Start | Finish | Predecessors | Complete | Remaining | Planned start | Planned finish | Total float | Constraint |
| --- | --- | --- | --- | --- | --- | --- | --- | --- | --- | --- | --- | --- |
| M000 | Notice to proceed | milestone | 0d | 2025-09-01 A | 2025-09-01 A |  | 100% |  |  |  |  |  |
| A800 | Building A energized | milestone | 0d | 2027-04-06 | 2027-04-06 | A440, E410 |  |  | 2026-06-02 | 2026-06-01 | -211d | finish on or before 2026-06-15 |
| A900 | Building A ready for service | milestone | 0d | 2027-07-13 | 2027-07-13 | A730 |  |  | 2026-09-22 | 2026-09-21 | -201d | finish on or before 2026-10-05 |
| B800 | Building B energized | milestone | 0d | 2027-04-06 | 2027-04-06 | B440, E410 |  |  | 2026-07-01 | 2026-06-30 | -190d | finish on or before 2026-07-14 |
| B900 | Building B ready for service | milestone | 0d | 2027-07-13 | 2027-07-13 | B730 |  |  | 2026-10-27 | 2026-10-26 | -176d | finish on or before 2026-11-09 |
| S100 | Site clearing |  | 14d | 2025-09-01 A | 2025-09-18 A | M000 | 100% |  |  |  |  |  |
| S110 | Mass grading |  | 21d | 2025-09-19 A | 2025-10-17 A | S100 | 100% |  |  |  |  |  |
| S120 | Underground utilities |  | 28d | 2025-10-20 A | 2025-11-26 A | S110 | 100% |  |  |  |  |  |
| P300 | Switchgear fabrication and delivery |  | 176d | 2025-09-01 A | 2026-10-06 | M000 | 68% | 57d | 2025-09-01 | 2026-03-04 | -130d |  |
| P310 | Transformer fabrication and delivery |  | 235d | 2025-09-01 A | 2027-02-05 | M000 | 38% | 145d | 2025-09-01 | 2026-04-02 | -211d |  |
| P320 | Generator fabrication and delivery |  | 180d | 2025-09-01 A | 2026-10-26 | M000 | 61% | 71d | 2025-09-01 | 2026-03-13 | -92d |  |
| P330 | Chiller fabrication and delivery |  | 112d | 2025-09-01 A | 2026-02-24 A | M000 | 100% |  | 2025-09-01 | 2026-02-03 |  |  |
| P340 | UPS fabrication and delivery |  | 111d | 2025-09-01 A | 2026-03-09 A | M000 | 100% |  | 2025-09-01 | 2026-01-14 |  |  |
| E400 | Substation civil and structure |  | 56d | 2025-11-27 A | 2026-02-12 A | S120 | 100% |  |  |  |  |  |
| E410 | Utility interconnect |  | 50d | 2026-02-13 A | 2026-04-23 A | E400 | 100% |  | 2026-02-13 | 2026-04-13 |  |  |
| E420 | Set and test main transformers |  | 14d | 2027-02-08 | 2027-02-25 | E400, P310 |  |  | 2026-04-03 | 2026-04-22 | -211d |  |
| E450 | Set and test generators |  | 21d | 2026-10-27 | 2026-11-24 | P320, E400 |  |  | 2026-03-16 | 2026-04-13 | -92d |  |
| A200 | Building A foundations |  | 35d | 2025-11-03 A | 2025-12-24 A | S120 SS+10d | 100% |  | 2025-11-03 | 2025-12-19 |  |  |
| A210 | Building A steel erection |  | 42d | 2025-12-25 A | 2026-03-04 A | A200 | 100% |  | 2025-12-22 | 2026-02-17 |  |  |
| A220 | Building A roofing |  | 21d | 2026-03-05 A | 2026-04-02 A | A210 | 100% |  | 2026-02-18 | 2026-03-18 |  |  |
| A230 | Building A envelope and façade |  | 35d | 2026-01-08 A | 2026-02-25 A | A210 SS+10d | 100% |  | 2026-01-05 | 2026-02-20 |  |  |
| A430 | Building A install switchgear |  | 21d | 2026-10-07 | 2026-11-04 | A220, P300 |  |  | 2026-03-19 | 2026-04-16 | -130d |  |
| A440 | Building A medium-voltage feeders |  | 28d | 2027-02-26 | 2027-04-06 | A430, E420 |  |  | 2026-04-23 | 2026-06-01 | -211d |  |
| A500 | Building A install chillers |  | 28d | 2026-04-03 A | 2026-05-27 A | P330, A220 | 100% |  | 2026-03-19 | 2026-04-27 |  |  |
| A510 | Building A CRAH units |  | 21d | 2026-02-26 A | 2026-04-07 A | A230 | 100% |  | 2026-02-23 | 2026-03-23 |  |  |
| A520 | Building A chilled water piping |  | 35d | 2026-05-28 A | 2026-07-27 | A500 | 83% | 6d | 2026-04-28 | 2026-06-15 | -20d |  |
| A600 | Building A raised floor and containment |  | 28d | 2026-02-26 A | 2026-04-13 A | A230 | 100% |  | 2026-02-23 | 2026-04-01 |  |  |
| A610 | Building A cable tray |  | 21d | 2026-04-14 A | 2026-05-12 A | A600 | 100% |  | 2026-04-02 | 2026-04-30 |  |  |
| A620 | Building A UPS installation |  | 17d | 2026-05-13 A | 2026-06-04 A | A610, P340 | 100% |  | 2026-05-01 | 2026-05-20 |  |  |
| A700 | Building A L2 installation checks |  | 14d | 2027-04-07 | 2027-04-26 | A800, A520, A510, A620 |  |  | 2026-06-16 | 2026-07-03 | -201d |  |
| A710 | Building A L3 startup |  | 21d | 2027-04-27 | 2027-05-25 | E450, A700 |  |  | 2026-07-06 | 2026-08-03 | -201d |  |
| A720 | Building A L4 functional testing |  | 21d | 2027-05-26 | 2027-06-23 | A710 |  |  | 2026-08-04 | 2026-09-01 | -201d |  |
| A730 | Building A L5 integrated systems test |  | 14d | 2027-06-24 | 2027-07-13 | A720 |  |  | 2026-09-02 | 2026-09-21 | -201d |  |
| B200 | Building B foundations |  | 35d | 2025-12-08 A | 2026-01-23 A | S120 SS+35d | 100% |  |  |  |  |  |
| B210 | Building B steel erection |  | 42d | 2026-01-26 A | 2026-03-27 A | B200 | 100% |  | 2026-01-26 | 2026-03-24 |  |  |
| B220 | Building B roofing |  | 21d | 2026-03-30 A | 2026-05-07 A | B210 | 100% |  | 2026-03-25 | 2026-04-22 |  |  |
| B230 | Building B envelope and façade |  | 35d | 2026-02-09 A | 2026-04-01 A | B210 SS+10d | 100% |  | 2026-02-09 | 2026-03-27 |  |  |
| B430 | Building B install switchgear |  | 21d | 2026-10-07 | 2026-11-04 | B220, P300 |  |  | 2026-04-23 | 2026-05-21 | -109d |  |
| B440 | Building B medium-voltage feeders |  | 28d | 2027-02-26 | 2027-04-06 | B430, E420 |  |  | 2026-05-22 | 2026-06-30 | -190d |  |
| B500 | Building B install chillers |  | 28d | 2026-04-28 A | 2026-06-04 A | P330, B220 | 100% |  | 2026-04-23 | 2026-06-01 |  |  |
| B510 | Building B CRAH units |  | 21d | 2026-04-02 A | 2026-04-30 A | B230 | 100% |  | 2026-03-30 | 2026-04-27 |  |  |
| B520 | Building B chilled water piping |  | 35d | 2026-06-05 A | 2026-07-28 | B500 | 80% | 7d | 2026-06-02 | 2026-07-20 | 4d |  |
| B600 | Building B raised floor and containment |  | 33d | 2026-04-02 A | 2026-05-18 A | B230 | 100% |  | 2026-03-30 | 2026-05-06 |  |  |
| B610 | Building B cable tray |  | 21d | 2026-05-19 A | 2026-06-19 A | B600 | 100% |  | 2026-05-07 | 2026-06-04 |  |  |
| B620 | Building B UPS installation |  | 14d | 2026-06-22 A | 2026-07-09 A | B610, P340 | 100% |  | 2026-06-05 | 2026-06-24 |  |  |
| B700 | Building B L2 installation checks |  | 14d | 2027-04-07 | 2027-04-26 | B800, B520, B510, B620 |  |  | 2026-07-21 | 2026-08-07 | -176d |  |
| B710 | Building B L3 startup |  | 21d | 2027-04-27 | 2027-05-25 | E450, B700 |  |  | 2026-08-10 | 2026-09-07 | -176d |  |
| B720 | Building B L4 functional testing |  | 21d | 2027-05-26 | 2027-06-23 | B710 |  |  | 2026-09-08 | 2026-10-06 | -176d |  |
| B730 | Building B L5 integrated systems test |  | 14d | 2027-06-24 | 2027-07-13 | B720 |  |  | 2026-10-07 | 2026-10-26 | -176d |  |

Notes:
- P310: Transformer core steel shortage at the factory
